# caB2B_Year_2_Edit

Schedule from MS Project, 2007-08-06 to 2013-09-05.
PSPL

## Calendars

- Standard: Mon-Fri 08:00-12:00, 13:00-17:00; Sat-Sun off. Exceptions (off unless hours are given): 2007-08-15.

## Resources

| Resource |
| --- |
| chetan_patil |
| Rahul Ner |
| chandrakant_talele |
| srinath_k |
| deepak_shingan |
| atul_jawale |
| hrishikesh_rajpathak |

## Schedule

| ID | WBS | Task | Duration | Start | Finish | Predecessors | Total slack | Resources | Work | Text1 |
| --- | --- | --- | --- | --- | --- | --- | --- | --- | --- | --- |
| 1 | 1 | **caB2B Year 2** | 1588d? | 2007-08-06 | 2013-09-05 |  | 0d |  | 12392h |  |
| 2 | 1.1 | **Mile Stone 1** | 222d | 2007-08-06 | 2008-06-11 |  | 0d |  | 3984h | Aug-Sept |
| 3 | 1.1.1 | **Saved Query** | 48d | 2007-08-06 | 2007-10-11 |  | 0d | Rahul Ner | 952h |  |
| 4 | 1.1.1.1 | query model changes | 3d | 2007-08-06 | 2007-08-08 |  | 0d | Rahul Ner | 24h |  |
| 5 | 1.1.1.2 | specifying hibernate mappings, schema generation | 10d | 2007-08-09 | 2007-08-23 | 4 | 0d | Rahul Ner | 80h |  |
| 6 | 1.1.1.3 | UI changes to integrate and testing | 2d | 2007-08-24 | 2007-08-27 | 5 | 0d | Rahul Ner | 16h |  |
| 7 | 1.1.1.4 | Regenrate UI (DAG etc) from saved query | 10d | 2007-08-28 | 2007-09-10 | 6 | 0d | Rahul Ner | 80h |  |
| 8 | 1.1.1.5 | **Parametrized query** | 23d | 2007-09-11 | 2007-10-11 | 7 | 0d | Rahul Ner | 368h |  |
| 9 | 1.1.1.5.1 | develop wireframes | 3d | 2007-09-11 | 2007-09-13 |  | 0d | Rahul Ner | 24h |  |
| 10 | 1.1.1.5.2 | query model changes | 4d | 2007-09-14 | 2007-09-19 | 9 | 0d | Rahul Ner | 32h |  |
| 11 | 1.1.1.5.3 | specifying hibernate mappings, schema generation | 3d | 2007-09-20 | 2007-09-24 | 10 | 0d | Rahul Ner | 24h |  |
| 12 | 1.1.1.5.4 | develop screen to define parameterized query | 6d | 2007-09-25 | 2007-10-02 | 11 | 0d | Rahul Ner | 48h |  |
| 13 | 1.1.1.5.5 | develop screen to execute parameterized query | 3d | 2007-10-03 | 2007-10-05 | 12 | 0d | Rahul Ner | 24h |  |
| 14 | 1.1.1.5.6 | UI changes to integrate and testing | 4d | 2007-10-08 | 2007-10-11 | 13 | 0d | Rahul Ner | 32h |  |
| 15 | 1.1.2 | **Create custom data categories** | 50d | 2007-10-12 | 2007-12-20 | 3 | 0d | Rahul Ner | 1200h |  |
| 16 | 1.1.2.1 | **In experiment context** | 29d | 2007-10-12 | 2007-11-21 |  | 0d | Rahul Ner | 464h |  |
| 17 | 1.1.2.1.1 | develop wireframes | 1d | 2007-10-12 | 2007-10-12 |  | 0d | Rahul Ner | 8h |  |
| 18 | 1.1.2.1.2 | deveople screen to create CDC | 7d | 2007-10-15 | 2007-10-23 | 17 | 0d | Rahul Ner | 56h |  |
| 19 | 1.1.2.1.3 | design CDC backend | 7d | 2007-10-24 | 2007-11-01 | 18 | 0d | Rahul Ner | 56h |  |
| 20 | 1.1.2.1.4 | saving CDC | 5d | 2007-11-02 | 2007-11-08 | 19 | 0d | Rahul Ner | 40h |  |
| 21 | 1.1.2.1.5 | populating and fetching data for CDC | 9d | 2007-11-09 | 2007-11-21 | 20 | 0d | Rahul Ner | 72h |  |
| 22 | 1.1.2.2 | **By Admin** | 21d | 2007-11-22 | 2007-12-20 | 16 | 0d | Rahul Ner | 336h |  |
| 23 | 1.1.2.2.1 | develop wireframes | 1d | 2007-11-22 | 2007-11-22 |  | 0d | Rahul Ner | 8h |  |
| 24 | 1.1.2.2.2 | deveople screen to create CDC | 5d | 2007-11-23 | 2007-11-29 | 23 | 0d | Rahul Ner | 40h |  |
| 25 | 1.1.2.2.3 | design backend | 2d | 2007-11-30 | 2007-12-03 | 24 | 0d | Rahul Ner | 16h |  |
| 26 | 1.1.2.2.4 | coding for backend | 6d | 2007-12-04 | 2007-12-11 | 25 | 0d | Rahul Ner | 48h |  |
| 27 | 1.1.2.2.5 | finding matching CDC while opeing experiment | 7d | 2007-12-12 | 2007-12-20 | 26 | 0d | Rahul Ner | 56h |  |

Notes:
- 8: This is User friendly Search for experiment data / Define category along with result view. Using this, user should be able to just define limit and get results. No need to worry about DAG, paths and no need to select the result view. / Refer to caTissue for requirments and screens. / Special Case : Category Query for a one-many attribute / (Queries like Participant with PMI = 1 and 2)
- 15: Show datalist, select subtree from data list as spreadsheet

| ID | WBS | Task | Duration | Start | Finish | Predecessors | Total slack | Resources | Work | Text1 |
| --- | --- | --- | --- | --- | --- | --- | --- | --- | --- | --- |
| 28 | 1.1.3 | **caArray support** | 30d | 2007-12-21 | 2008-01-31 | 15 | 0d | Rahul Ner | 480h |  |
| 29 | 1.1.3.1 | Investigate to query for large objects | 15d | 2007-12-21 | 2008-01-10 |  | 0d | Rahul Ner | 120h |  |
| 30 | 1.1.3.2 | design BDQ to save along with metadata | 15d | 2008-01-11 | 2008-01-31 | 29 | 0d | Rahul Ner | 120h |  |
| 31 | 1.1.4 | **New viewers (metadata based)** | 28d | 2008-02-01 | 2008-03-11 | 28 | 0d | Rahul Ner | 616h |  |
| 32 | 1.1.4.1 | design for generic viewer | 7d | 2008-02-01 | 2008-02-11 |  | 0d | Rahul Ner | 56h |  |
| 33 | 1.1.4.2 | **Heat Map viewer** | 21d | 2008-02-12 | 2008-03-11 | 32 | 0d | Rahul Ner | 336h |  |
| 34 | 1.1.4.2.1 | find appropriate 3rd party library | 9d | 2008-02-12 | 2008-02-22 |  | 0d | Rahul Ner | 72h |  |
| 35 | 1.1.4.2.2 | finalize operation to be done on heat map | 3d | 2008-02-25 | 2008-02-27 | 34 | 0d | Rahul Ner | 24h |  |
| 36 | 1.1.4.2.3 | implement heat map viewer | 9d | 2008-02-28 | 2008-03-11 | 35 | 0d | Rahul Ner | 72h |  |
| 37 | 1.1.5 | **Spreadsheet Component** | 22d | 2008-03-12 | 2008-04-10 | 31 | 0d | Rahul Ner | 352h |  |
| 38 | 1.1.5.1 | Export | 2d | 2008-03-12 | 2008-03-13 |  | 0d | Rahul Ner | 16h |  |
| 39 | 1.1.5.2 | Specify view for Custom data category | 3d | 2008-03-14 | 2008-03-18 | 38 | 0d | Rahul Ner | 24h |  |
| 40 | 1.1.5.3 | Filters like spot fire | 12d | 2008-03-19 | 2008-04-03 | 39 | 0d | Rahul Ner | 96h |  |
| 41 | 1.1.5.4 | Add New ,copy ,paste | 5d | 2008-04-04 | 2008-04-10 | 40 | 0d | Rahul Ner | 40h |  |
| 42 | 1.1.6 | **Providing security credentials for the data services** | 24d | 2008-04-11 | 2008-05-14 | 37 | 0d | Rahul Ner | 384h |  |
| 43 | 1.1.6.1 | investigate grid security features | 15d | 2008-04-11 | 2008-05-01 |  | 0d | Rahul Ner | 120h |  |
| 44 | 1.1.6.2 | test with catissue | 9d | 2008-05-02 | 2008-05-14 | 43 | 0d | Rahul Ner | 72h |  |
| 45 | 1.1.7 | ICR | 20d | 2008-05-15 | 2008-06-11 | 42 | 0d |  |  |  |
| 46 | 1.2 | **Mile Stone 2** | 215d | 2008-06-12 | 2009-04-08 | 2 | 0d |  | 1288h | Oct-Nov |
| 47 | 1.2.1 | **Analytical services for micro array data** | 21d | 2008-06-12 | 2008-07-10 |  | 0d | Rahul Ner | 168h |  |
| 48 | 1.2.1.1 | Investigate on AS metadata | 9d | 2008-06-12 | 2008-06-24 |  | 0d |  |  |  |
| 49 | 1.2.1.2 | load input output model for service | 5d | 2008-06-25 | 2008-07-01 | 48 | 0d |  |  |  |
| 50 | 1.2.1.3 | test the service | 7d | 2008-07-02 | 2008-07-10 | 49 | 0d |  |  |  |
| 51 | 1.2.2 | **Define output view (3rd screen)** | 26d | 2008-07-11 | 2008-08-15 | 47 | 0d | Rahul Ner | 416h |  |
| 52 | 1.2.2.1 | develop wireframes | 1d | 2008-07-11 | 2008-07-11 |  | 0d | Rahul Ner | 8h |  |
| 53 | 1.2.2.2 | develop screen | 10d | 2008-07-14 | 2008-07-25 | 52 | 0d | Rahul Ner | 80h |  |
| 54 | 1.2.2.3 | chages in query generation | 15d | 2008-07-28 | 2008-08-15 | 53 | 0d | Rahul Ner | 120h |  |
| 55 | 1.2.3 | Convert 3D to 2D data | 22d | 2008-08-18 | 2008-09-16 | 51 | 0d | Rahul Ner | 176h |  |
| 56 | 1.2.4 | Creating and save categories | 15d | 2008-09-17 | 2008-10-07 | 55 | 0d | Rahul Ner | 120h |  |
| 57 | 1.2.5 | Automated down load of caDSR models | 22d | 2008-10-08 | 2008-11-06 | 56 | 0d | Rahul Ner | 176h |  |
| 58 | 1.2.6 | Connecting two categories | 7d | 2008-11-07 | 2008-11-17 | 57 | 0d | Rahul Ner | 56h |  |
| 59 | 1.2.7 | New viewers (metadata based) | 22d | 2008-11-18 | 2008-12-17 | 58 | 0d | Rahul Ner | 176h |  |
| 60 | 1.2.8 | ICR | 80d | 2008-12-18 | 2009-04-08 | 59 | 0d |  |  |  |

Notes:
- 30: static models for the variosu types of BQD
- 31: Annotation viewer (gene Inspector) embedded webpage - browser window (refer to FE) / Pathway browser / Literature network / heat map
- 37: Edit button (slide no 46) / copy (use clipboard) / paste (To newly added columns) / Add Column / Delete Column (Newly added columns only P2) / Always show Export/Filter options + formulas (P3) / count of distinct values
- 39: (Just a spreadsheet operations) + show all column , select the required columns
- 40: Filter on BioDataCube / count of distinct values
- 51: It copies the original DAG build using conditions and allows user to specify more classes needed as output. It is similar to tissue core. Admin won't define view for each category. It will be smartly determined by the application. User can mark a node as "Present in view" Or "Not present in view". We need to decide should user be able to delete his limits (nodes) while defining view
- 55: S-> molecular Event1 and 2 show then as spreadsheet with row as specimen1,2,3 and columns as ME1 col1, ME1 col2,ME2 col1, ME2 col2, This is only for one level in tree (association)
- 56: It it similar to parameterixed query, screen will be similar to add limit page / UE to change slide 72, it should be similar to parametrized query
- 57: Admin will be shown all avalible models using discovery. Then selected models will be loaded
- 58: DAG like view where two graphs are shown in DAG and they will be connected by pairing classes from one category to eac class in other category

| ID | WBS | Task | Duration | Start | Finish | Predecessors | Total slack | Resources | Work | Text1 |
| --- | --- | --- | --- | --- | --- | --- | --- | --- | --- | --- |
| 61 | 1.3 | **Mile Stone 3** | 212d | 2009-04-09 | 2010-01-29 | 46 | 0d |  | 1376h | Dec-Jan |
| 62 | 1.3.1 | configuration of service/instance to query | 22d | 2009-04-09 | 2009-05-08 |  | 0d | Rahul Ner | 176h |  |
| 63 | 1.3.2 | caArray category | 45d | 2009-05-11 | 2009-07-10 | 62 | 0d | Rahul Ner | 360h |  |
| 64 | 1.3.3 | Remove client jar dependency for Analytical services (AS) | 35d | 2009-07-13 | 2009-08-28 | 63 | 0d | Rahul Ner | 280h |  |
| 65 | 1.3.4 | Ability to configure the applications used for metadata serach | 18d | 2009-08-31 | 2009-09-23 | 64 | 0d | Rahul Ner | 144h |  |
| 66 | 1.3.5 | pre-defined filters on attributes | 15d | 2009-09-24 | 2009-10-14 | 65 | 0d | Rahul Ner | 120h |  |
| 67 | 1.3.6 | Join data list (data category) | 15d | 2009-10-15 | 2009-11-04 | 66 | 0d | Rahul Ner | 120h |  |
| 68 | 1.3.7 | New viewers (metadata based) | 22d | 2009-11-05 | 2009-12-04 | 67 | 0d | Rahul Ner | 176h |  |
| 69 | 1.3.8 | ICR | 40d | 2009-12-07 | 2010-01-29 | 68 | 0d |  |  |  |
| 70 | 1.4 | **Mile Stone 4** | 222d | 2010-02-01 | 2010-12-07 | 61 | 0d |  | 1616h | Feb-Mar |
| 71 | 1.4.1 | Relevance based searched | 35d | 2010-02-01 | 2010-03-19 |  | 0d | Rahul Ner | 280h |  |
| 72 | 1.4.2 | Return derived classes when searched for base class | 30d | 2010-03-22 | 2010-04-30 | 71 | 0d | Rahul Ner | 240h |  |
| 73 | 1.4.3 | Asynchronous execution of query | 45d | 2010-05-03 | 2010-07-02 | 72 | 0d | Rahul Ner | 360h |  |
| 74 | 1.4.4 | Authentication with our own IDP | 30d | 2010-07-05 | 2010-08-13 | 73 | 0d | Rahul Ner | 240h |  |
| 75 | 1.4.5 | Curating path | 30d | 2010-08-16 | 2010-09-24 | 74 | 0d | Rahul Ner | 240h |  |
| 76 | 1.4.6 | New viewers (metadata based) | 22d | 2010-09-27 | 2010-10-26 | 75 | 0d | Rahul Ner | 176h |  |
| 77 | 1.4.7 | Incorporate UE Review comments till date Part 1 | 20d | 2010-10-27 | 2010-11-23 | 76 | 0d |  |  |  |
| 78 | 1.4.8 | Define URLs for selected data for browser window viewer | 10d | 2010-11-24 | 2010-12-07 | 77 | 0d | Rahul Ner | 80h |  |
| 79 | 1.5 | **Mile Stone 5** | 365d | 2010-12-08 | 2012-05-01 | 70 | 0d |  | 2680h | NA |
| 80 | 1.5.1 | View the existing data list | 22d | 2010-12-08 | 2011-01-06 |  | 0d | Rahul Ner | 176h |  |
| 81 | 1.5.2 | Paths between categories and class | 35d | 2011-01-07 | 2011-02-24 | 80 | 0d | Rahul Ner | 280h |  |
| 82 | 1.5.3 | Create Experiments from the multiple existing data list. | 10d | 2011-02-25 | 2011-03-10 | 81 | 0d | Rahul Ner | 80h |  |
| 83 | 1.5.4 | User friendly names for records | 15d | 2011-03-11 | 2011-03-31 | 82 | 0d | Rahul Ner | 120h |  |
| 84 | 1.5.5 | parenthesis in DAG | 35d | 2011-04-01 | 2011-05-19 | 83 | 0d | Rahul Ner | 280h |  |
| 85 | 1.5.6 | Popularity Paths, categories | 18d | 2011-05-20 | 2011-06-14 | 84 | 0d | Rahul Ner | 144h |  |
| 86 | 1.5.7 | Edit used path (overriding curated/selected paths) | 10d | 2011-06-15 | 2011-06-28 | 85 | 0d | Rahul Ner | 80h |  |
| 87 | 1.5.8 | Define Attribute view | 10d | 2011-06-29 | 2011-07-12 | 86 | 0d | Rahul Ner | 80h |  |
| 88 | 1.5.9 | Highlight matched words in search results | 10d | 2011-07-13 | 2011-07-26 | 87 | 0d | Rahul Ner | 80h |  |
| 89 | 1.5.10 | Incorporate UE Review comments till date Part 2 | 30d | 2011-07-27 | 2011-09-06 | 88 | 0d |  |  |  |
| 90 | 1.5.11 | Partial auto connect | 45d | 2011-09-07 | 2011-11-08 | 89 | 0d | Rahul Ner | 360h |  |
| 91 | 1.5.12 | Authentication with other IDP | 15d | 2011-11-09 | 2011-11-29 | 90 | 0d | Rahul Ner | 120h |  |
| 92 | 1.5.13 | Smart metadata search (Merge CDEs across versions of same application) | 45d | 2011-11-30 | 2012-01-31 | 91 | 0d | Rahul Ner | 360h |  |
| 93 | 1.5.14 | Delete data to existing experiment | 15d | 2012-02-01 | 2012-02-21 | 92 | 0d | Rahul Ner | 120h |  |
| 94 | 1.5.15 | Add data to existing experiment | 15d | 2012-02-22 | 2012-03-13 | 93 | 0d | Rahul Ner | 120h |  |
| 95 | 1.5.16 | While creating data list, ability to add only selected attributes of records | 35d | 2012-03-14 | 2012-05-01 | 94 | 0d | Rahul Ner | 280h |  |

Notes:
- 62: With setting for: Admin, User, Query / Configurin service URL, caB2B clinet URL etc.Ability to configure the applications used for metadata serach
- 64: Get a generic way to invoke AS similar to data services
- 65: Limited by only available services. Also is no instance is configured by admin and user then model for that instance won't searched in metadata. Even though metadata serach is performed on some specific models, user can also view experiments which has data from some other models
- 66: UE edit slide 78 , refer to caTissue for details
- 67: Connecting two datalist based on CDE match, put 2 dropdowns on slide 6 for showing classes OR put attributes + class. / This should be important in joining custom data category. Put a dropdown for Equals and not equals
- 71: Explorer and use Lucene / For entered search string, get synonyms and search for those also. Get synonyms from grid (EVS)
- 73: Asynchronous queres and their results are always saved (System-saved) Later on user can save them expliciltly or can delete it.
- 75: Along with curating, copy curated paths across different application versions
- 82: Slide 61-65
- 83: Instead of participant_1 show Smith Merry
- 87: Ability to define order in which attributes will be displayed in Add limit and result detailed page
- 88: Highlight matched words from description/name, / Highlight matched attributes in add limit page / Select matched Permissible values, / Select matched concept codes / For public id and Cocnept code show Hyper link to caDSR
- 92: Three versions of caTissue should not lead to metadata search showing 3 participant if its CDE is same in each instance, And if shown once query all three instances
- 95: what about the service that expect data fully populated ?

| ID | WBS | Task | Type | Duration | Start | Finish | Predecessors | Total slack | Free slack | Resources | Work | Text1 |
| --- | --- | --- | --- | --- | --- | --- | --- | --- | --- | --- | --- | --- |
| 96 | 1.6 | **Mile Stone 6** |  | 252d | 2012-05-02 | 2013-04-18 | 79 | 0d |  |  | 1416h | NA |
| 97 | 1.6.1 | Copy/Move experiment |  | 15d | 2012-05-02 | 2012-05-22 |  | 0d |  | Rahul Ner | 120h |  |
| 98 | 1.6.2 | Upgrade technology stack as per caBIG |  | 45d | 2012-05-23 | 2012-07-24 | 97 | 0d |  | Rahul Ner | 360h |  |
| 99 | 1.6.3 | Keyboard support for application |  | 45d | 2012-07-25 | 2012-09-25 | 98 | 0d |  |  |  |  |
| 100 | 1.6.4 | Automatic resize of application UI for all resolution |  | 30d | 2012-09-26 | 2012-11-06 | 99 | 0d |  |  |  |  |
| 101 | 1.6.5 | Defining category group |  | 22d | 2012-11-07 | 2012-12-06 | 100 | 0d |  | Rahul Ner | 176h |  |
| 102 | 1.6.6 | Advance view |  | 35d | 2012-12-07 | 2013-01-24 | 101 | 0d |  | Rahul Ner | 280h |  |
| 103 | 1.6.7 | Incorporate pending UE comments |  | 60d | 2013-01-25 | 2013-04-18 | 102 | 0d |  | Rahul Ner | 480h |  |
| 104 | 1.7 | **Documentaion** |  | 100d | 2013-04-19 | 2013-09-05 | 103 | 0d |  |  |  | Apr W1 W2 W3 |
| 105 | 1.7.1 | User manual |  | 35d | 2013-04-19 | 2013-06-06 |  | 0d |  |  |  |  |
| 106 | 1.7.2 | Design document |  | 35d | 2013-06-07 | 2013-07-25 | 105 | 0d |  |  |  |  |
| 107 | 1.7.3 | Lesson learned document |  | 15d | 2013-07-26 | 2013-08-15 | 106 | 0d |  |  |  |  |
| 108 | 1.7.4 | Web site update |  | 15d | 2013-08-16 | 2013-09-05 | 107 | 0d |  |  |  |  |
| 109 | 1.8 | **Release activities** |  | 134d | 2007-08-06 | 2008-02-08 |  | 1454d |  |  |  | Apr W4-May |
| 110 | 1.8.1 | internal QA cycle |  | 30d | 2007-08-06 | 2007-09-17 |  | 1454d | 0d |  |  |  |
| 111 | 1.8.2 | bug fixing |  | 45d | 2007-09-18 | 2007-11-19 | 110 | 1454d | 0d |  |  |  |
| 112 | 1.8.3 | beta release |  | 7d | 2007-11-20 | 2007-11-28 | 111 | 1454d | 0d |  |  |  |
| 113 | 1.8.4 | Testing by end users | milestone | 0d | 2007-11-28 | 2007-11-28 | 112 | 1454d | 0d |  |  |  |
| 114 | 1.8.5 | bug fixing (beta and end user bugs) |  | 45d | 2007-11-29 | 2008-01-30 | 113 | 1454d | 0d |  |  |  |
| 115 | 1.8.6 | final release |  | 7d | 2008-01-31 | 2008-02-08 | 114 | 1454d |  |  |  |  |
| 116 | 1.9 | **Performance** |  | 1d? | 2007-08-06 | 2007-08-06 |  | 1587d |  |  | 32h | Unable to estimate |
| 117 | 1.9.1 | WS enumeration |  | 1d? | 2007-08-06 | 2007-08-06 |  | 1558d |  | Rahul Ner | 8h |  |
| 118 | 1.9.2 | High throughput workgroup |  | 1d? | 2007-08-06 | 2007-08-06 |  | 1558d |  | Rahul Ner | 8h |  |
| 119 | 1.9.3 | Explore caGrid FTP |  | 1d? | 2007-08-06 | 2007-08-06 |  | 1558d |  | Rahul Ner | 8h |  |
| 120 | 1.9.4 | Develop prototype for compomnets for performance issues |  | 1d? | 2007-08-06 | 2007-08-06 |  | 1558d |  | Rahul Ner | 8h |  |

Notes:
- 99: For entire application whereever possible like buttons,tab-ed navigation through search results
- 100: Current implementation is for target resolution 1024x768. If application is used on higher resolutions, component size does not get adjusted automatically. i.e box of size 200 pixel on 1024x768 takes 200 pixels on 1280x960
- 102: advance tab on result screen(4) / Not important as per discussion with Srikanth, Rakesh
